# Library

Schedule from MS Project, 2022-09-28 to 2022-12-05, status date 2022-11-25, costs in $, A marks actual dates.

## Calendars

- Standard: Mon-Fri 08:00-12:00, 13:00-17:00; Sat-Sun off. Exceptions (off unless hours are given): 2022-10-15 08:00-12:00, 13:00-17:00.

## Resources

| Resource | Rate | Notes |
| --- | --- | --- |
| Luu Trinh Lam | 5 |  |
| Nguyen Nhat Anh | 5 |  |
| Ta Gia Hung | 5 |  |
| Huynh Nhat Loong | 5 |  |
| Amazon S3 Standard | 0.02 | $0.023/GB (first 50TB per month) |
| Amazon EC2 On-Demand | 0.01 | a1.xlarge / $0.102 / 4 CPU / 8 GiBEBS Memory / Network Performance: OnlyUp to 10 Gigabit |
| Knowledge Sharing Meeting with all staffs |  |  |
| Recuring training the system |  |  |

## Schedule

| ID | WBS | Task | Type | Duration | Start | Finish | Predecessors | Complete | Baseline start | Baseline finish | Baseline duration | Constraint | Resources | Work | Actual work | Cost | Baseline cost | Actual cost |
| --- | --- | --- | --- | --- | --- | --- | --- | --- | --- | --- | --- | --- | --- | --- | --- | --- | --- | --- |
| 1 | 1 | **Diagnose the old system:** |  | 6.62d | 2022-09-28 A | 2022-10-06 A |  | 100% | 2022-09-28 | 2022-10-06 | 6.62d |  |  | 81h | 81h | 405 | 405 | 405 |
| 2 | 1.1 | Perform surveying on regular readers at the library |  | 2.5d | 2022-09-28 A | 2022-09-30 A |  | 100% | 2022-09-28 | 2022-09-30 | 2.5d | start no earlier than 2022-09-28 | Luu Trinh Lam | 20h | 20h | 100 | 100 | 100 |
| 3 | 1.2 | Analyze surveys and look into the problem | manual | 0.12d | 2022-10-03 A | 2022-10-03 A | 2 | 100% | 2022-10-03 | 2022-10-03 | 0.12d |  | Nguyen Nhat Anh | 1h | 1h | 5 | 5 | 5 |
| 4 | 1.3 | Investigate employees (librarian, IT specialist, head of library) |  | 2d | 2022-09-28 A | 2022-09-29 A |  | 100% | 2022-09-28 | 2022-09-29 | 2d | start no earlier than 2022-09-28 | Ta Gia Hung | 16h | 16h | 80 | 80 | 80 |
| 5 | 1.4 | Measure the performance of the old servers |  | 2d | 2022-09-28 A | 2022-09-29 A |  | 100% | 2022-09-28 | 2022-09-29 | 2d |  | Huynh Nhat Loong | 16h | 16h | 80 | 80 | 80 |
| 6 | 1.5 | Meeting with Head of Library to report the old system |  | 3.5d | 2022-10-03 A | 2022-10-06 A | 4, 2, 3, 5 | 100% | 2022-10-03 | 2022-10-06 | 3.5d | start no earlier than 2022-09-28 | Nguyen Nhat Anh | 28h | 28h | 140 | 140 | 140 |
| 7 | 2 | **Come up with possible solutions (listing out requirements):** |  | 9.88d | 2022-10-06 A | 2022-10-19 A | 6 | 100% | 2022-10-06 | 2022-10-19 | 9.88d |  |  | 107.04h | 107.04h | 535.2 | 535.2 | 535.2 |
| 8 | 2.1 | Scale up the system (storage for physical books, …) |  | 6.88d | 2022-10-06 A | 2022-10-15 A |  | 100% | 2022-10-06 | 2022-10-15 | 6.88d |  | Luu Trinh Lam | 55.04h | 55.04h | 275.2 | 275.2 | 275.2 |
| 9 | 2.2 | **Come up with new functionalities to benefit the actors:** |  | 8d | 2022-10-10 A | 2022-10-18 A |  | 100% | 2022-10-10 | 2022-10-18 | 8d |  |  | 48h | 48h | 240 | 240 | 240 |
| 10 | 2.2.1 | E-books (rental and trial mode) |  | 2d | 2022-10-10 A | 2022-10-11 A |  | 100% | 2022-10-10 | 2022-10-11 | 2d | start no earlier than 2022-10-08 | Huynh Nhat Loong | 16h | 16h | 80 | 80 | 80 |
| 11 | 2.2.2 | Auto generating reports |  | 2d | 2022-10-10 A | 2022-10-11 A |  | 100% | 2022-10-10 | 2022-10-11 | 2d | start no earlier than 2022-10-10 | Nguyen Nhat Anh | 16h | 16h | 80 | 80 | 80 |
| 12 | 2.2.3 | Auto tracking progress |  | 2d | 2022-10-17 A | 2022-10-18 A |  | 100% | 2022-10-17 | 2022-10-18 | 2d | start no earlier than 2022-10-09 | Luu Trinh Lam | 16h | 16h | 80 | 80 | 80 |
| 13 | 2.3 | Meeting: Suggest new features to Client |  | 0.5d | 2022-10-19 A | 2022-10-19 A | 8, 10, 11, 12 | 100% | 2022-10-19 | 2022-10-19 | 0.5d | start no earlier than 2022-10-14 | Ta Gia Hung | 4h | 4h | 20 | 20 | 20 |
| 14 | 3 | **Design the system:** |  | 9d | 2022-10-19 A | 2022-11-01 A | 13 | 100% | 2022-10-19 | 2022-10-31 | 8.5d |  |  | 156h | 156h | 780 | 760 | 780 |
| 15 | 3.1 | **Design diagrams:** |  | 2.5d | 2022-10-19 A | 2022-10-21 A |  | 100% | 2022-10-19 | 2022-10-21 | 2.5d |  |  | 48h | 48h | 240 | 240 | 240 |
| 16 | 3.1.1 | Use-case diagram |  | 1d | 2022-10-19 A | 2022-10-20 A |  | 100% | 2022-10-19 | 2022-10-20 | 1d | start no earlier than 2022-10-17 | Luu Trinh Lam | 8h | 8h | 40 | 40 | 40 |
| 17 | 3.1.2 | Low-level sequence diagram |  | 1d | 2022-10-19 A | 2022-10-20 A |  | 100% | 2022-10-19 | 2022-10-20 | 1d | start no earlier than 2022-10-13 | Nguyen Nhat Anh | 8h | 8h | 40 | 40 | 40 |
| 18 | 3.1.3 | High-level sequence diagram |  | 1d | 2022-10-19 A | 2022-10-20 A |  | 100% | 2022-10-19 | 2022-10-20 | 1d |  | Ta Gia Hung | 8h | 8h | 40 | 40 | 40 |
| 19 | 3.1.4 | Class diagram |  | 1d | 2022-10-19 A | 2022-10-20 A |  | 100% | 2022-10-19 | 2022-10-20 | 1d | start no earlier than 2022-10-13 | Huynh Nhat Loong | 8h | 8h | 40 | 40 | 40 |
| 20 | 3.1.5 | Deployment diagram |  | 2d | 2022-10-19 A | 2022-10-21 A |  | 100% | 2022-10-19 | 2022-10-21 | 2d | start no earlier than 2022-10-12 | Luu Trinh Lam | 16h | 16h | 80 | 80 | 80 |
| 21 | 3.2 | **Design user interface/ user experience** |  | 6.5d | 2022-10-20 A | 2022-10-28 A | 16, 17, 18 | 100% | 2022-10-20 | 2022-10-28 | 6d |  |  | 48h | 48h | 240 | 240 | 240 |
| 22 | 3.2.1 | Try to extend the old interface’s structure by adding more pages (i.e: ebook rental page for readers, progress-tracking page for Head of Library, …) |  | 2d | 2022-10-20 A | 2022-10-24 A |  | 100% | 2022-10-20 | 2022-10-24 | 2d | start no earlier than 2022-10-15 | Huynh Nhat Loong | 16h | 16h | 80 | 80 | 80 |
| 23 | 3.2.2 | If unable to do so, come up with a new wireframe |  | 3d | 2022-10-25 A | 2022-10-27 A | 22 | 100% | 2022-10-24 | 2022-10-27 | 3d | start no earlier than 2022-10-25 | Luu Trinh Lam | 24h | 24h | 120 | 120 | 120 |
| 24 | 3.2.3 | Meeting: Update the mockup to Client. |  | 1d | 2022-10-28 A | 2022-10-28 A | 23 | 100% | 2022-10-27 | 2022-10-28 | 1d |  | Nguyen Nhat Anh | 8h | 8h | 40 | 40 | 40 |

| ID | WBS | Task | Duration | Start | Finish | Predecessors | Complete | Baseline start | Baseline finish | Baseline duration | Constraint | Resources | Work | Actual work | Cost | Baseline cost | Actual cost |
| --- | --- | --- | --- | --- | --- | --- | --- | --- | --- | --- | --- | --- | --- | --- | --- | --- | --- |
| 25 | 3.3 | **Design the server:** | 6.5d | 2022-10-24 A | 2022-11-01 A | 16, 19 | 100% | 2022-10-24 | 2022-10-31 | 6d |  |  | 28h | 28h | 140 | 120 | 140 |
| 26 | 3.3.1 | Extend the old storage | 1d | 2022-10-24 A | 2022-10-24 A |  | 100% | 2022-10-24 | 2022-10-24 | 0.5d |  | Luu Trinh Lam | 8h | 8h | 40 | 20 | 40 |
| 27 | 3.3.2 | Design new databases for library’s Ebook system | 2.5d | 2022-10-28 A | 2022-11-01 A | 26 | 100% | 2022-10-27 | 2022-10-31 | 2.5d |  | Luu Trinh Lam | 20h | 20h | 100 | 100 | 100 |
| 28 | 3.4 | **Design the infrastructure:** | 4d | 2022-10-24 A | 2022-10-27 A | 19, 20 | 100% | 2022-10-24 | 2022-10-27 | 4d |  |  | 32h | 32h | 160 | 160 | 160 |
| 29 | 3.4.1 | Renew the old one (faster network, better PCs, …) | 1d | 2022-10-24 A | 2022-10-24 A |  | 100% | 2022-10-24 | 2022-10-24 | 1d | start no earlier than 2022-10-19 | Nguyen Nhat Anh | 8h | 8h | 40 | 40 | 40 |
| 30 | 3.4.2 | Decide which components of the system to move into cloud system for scalability and better load handling | 2d | 2022-10-25 A | 2022-10-26 A | 29 | 100% | 2022-10-25 | 2022-10-26 | 2d | start no earlier than 2022-10-17 | Ta Gia Hung | 16h | 16h | 80 | 80 | 80 |
| 31 | 3.4.3 | Meeting: Suggest improvements for infrastructure to Client. | 1d | 2022-10-27 A | 2022-10-27 A | 30 | 100% | 2022-10-27 | 2022-10-27 | 1d |  | Huynh Nhat Loong | 8h | 8h | 40 | 40 | 40 |
| 32 | 4 | **Implementation:** | 17.5d | 2022-11-01 A | 2022-11-24 A | 24, 27, 31 | 100% | 2022-11-01 | 2022-11-21 | 14.5d |  |  | 348h | 348h | 1,740 | 1,740 | 1,740 |
| 33 | 4.1 | **Front-end:** | 17.5d | 2022-11-01 A | 2022-11-24 A |  | 100% | 2022-11-01 | 2022-11-21 | 14.5d |  |  | 204h | 204h | 1,020 | 1,020 | 1,020 |
| 34 | 4.1.1 | **Implement UI:** | 5d | 2022-11-01 A | 2022-11-08 A |  | 100% | 2022-11-01 | 2022-11-04 | 4d |  |  | 96h | 96h | 480 | 480 | 480 |
| 35 | 4.1.1.1 | **E-book** | 2d | 2022-11-01 A | 2022-11-03 A |  | 100% | 2022-11-01 | 2022-11-02 | 2d |  |  | 64h | 64h | 320 | 320 | 320 |
| 36 | 4.1.1.1.1 | E-book list page | 2d | 2022-11-01 A | 2022-11-03 A |  | 100% | 2022-11-01 | 2022-11-02 | 2d | start no earlier than 2022-10-24 | Huynh Nhat Loong | 16h | 16h | 80 | 80 | 80 |
| 37 | 4.1.1.1.2 | E-book detail page | 2d | 2022-11-01 A | 2022-11-03 A |  | 100% | 2022-11-01 | 2022-11-02 | 2d |  | Luu Trinh Lam | 16h | 16h | 80 | 80 | 80 |
| 38 | 4.1.1.1.3 | Reading ebook UI | 2d | 2022-11-01 A | 2022-11-03 A |  | 100% | 2022-11-01 | 2022-11-02 | 2d |  | Ta Gia Hung | 16h | 16h | 80 | 80 | 80 |
| 39 | 4.1.1.1.4 | Request / Approve e-book rental dialog | 2d | 2022-11-01 A | 2022-11-03 A |  | 100% | 2022-11-01 | 2022-11-02 | 2d |  | Nguyen Nhat Anh | 16h | 16h | 80 | 80 | 80 |
| 40 | 4.1.1.2 | **Management system** | 5d | 2022-11-01 A | 2022-11-08 A |  | 100% | 2022-11-03 | 2022-11-04 | 2d |  |  | 32h | 32h | 160 | 160 | 160 |
| 41 | 4.1.1.2.1 | Auto-generated Report page | 2d | 2022-11-03 A | 2022-11-08 A | 36, 37, 38, 39 | 100% | 2022-11-03 | 2022-11-04 | 2d | start no earlier than 2022-10-26 | Ta Gia Hung | 16h | 16h | 80 | 80 | 80 |
| 42 | 4.1.1.2.2 | Work progress insights | 2d | 2022-11-01 A | 2022-11-04 A |  | 100% | 2022-11-03 | 2022-11-04 | 2d | start no earlier than 2022-10-26 | Nguyen Nhat Anh | 16h | 16h | 80 | 80 | 80 |
| 43 | 4.1.2 | Routing URL | 6d | 2022-11-08 A | 2022-11-18 A | 36, 37, 38, 39, 41, 42 | 100% | 2022-11-07 | 2022-11-14 | 6d | start no earlier than 2022-10-27 | Luu Trinh Lam | 48h | 48h | 240 | 240 | 240 |
| 44 | 4.1.3 | Integrate APIs from Back-end | 3.5d | 2022-11-18 A | 2022-11-23 A | 43, 58 | 100% | 2022-11-15 | 2022-11-18 | 3.5d | start no earlier than 2022-11-01 | Huynh Nhat Loong | 28h | 28h | 140 | 140 | 140 |
| 45 | 4.1.4 | **Testing** | 1d | 2022-11-24 A | 2022-11-24 A | 43, 44 | 100% | 2022-11-18 | 2022-11-21 | 1d |  |  | 32h | 32h | 160 | 160 | 160 |
| 46 | 4.1.4.1 | Snapshot test | 1d | 2022-11-24 A | 2022-11-24 A |  | 100% | 2022-11-18 | 2022-11-21 | 1d |  | Luu Trinh Lam | 8h | 8h | 40 | 40 | 40 |
| 47 | 4.1.4.2 | Unit test | 1d | 2022-11-24 A | 2022-11-24 A |  | 100% | 2022-11-18 | 2022-11-21 | 1d | start no earlier than 2022-11-04 | Huynh Nhat Loong | 8h | 8h | 40 | 40 | 40 |
| 48 | 4.1.4.3 | End to end test | 1d | 2022-11-24 A | 2022-11-24 A |  | 100% | 2022-11-18 | 2022-11-21 | 1d | start no earlier than 2022-11-07 | Ta Gia Hung | 8h | 8h | 40 | 40 | 40 |
| 49 | 4.1.4.4 | Overall Coverage and test report: meeting with QA | 1d | 2022-11-24 A | 2022-11-24 A |  | 100% | 2022-11-18 | 2022-11-21 | 1d | start no earlier than 2022-11-08 | Nguyen Nhat Anh | 8h | 8h | 40 | 40 | 40 |

| ID | WBS | Task | Duration | Start | Finish | Predecessors | Complete | Baseline start | Baseline finish | Baseline duration | Constraint | Resources | Work | Actual work | Cost | Baseline cost | Actual cost |
| --- | --- | --- | --- | --- | --- | --- | --- | --- | --- | --- | --- | --- | --- | --- | --- | --- | --- |
| 50 | 4.2 | **Back-end:** | 10.5d | 2022-11-03 A | 2022-11-17 A |  | 100% | 2022-11-03 | 2022-11-16 | 10d |  |  | 144h | 144h | 720 | 720 | 720 |
| 51 | 4.2.1 | **Create new databases** | 2d | 2022-11-03 A | 2022-11-07 A |  | 100% | 2022-11-03 | 2022-11-04 | 2d |  |  | 20h | 20h | 100 | 100 | 100 |
| 52 | 4.2.1.1 | A bigger database compared to the old one for migrating old data | 2d | 2022-11-03 A | 2022-11-07 A |  | 100% | 2022-11-03 | 2022-11-04 | 2d | start no earlier than 2022-10-26 | Luu Trinh Lam | 16h | 16h | 80 | 80 | 80 |
| 53 | 4.2.1.2 | A database for ebook management system | 0.5d | 2022-11-03 A | 2022-11-03 A |  | 100% | 2022-11-03 | 2022-11-03 | 0.5d | start no earlier than 2022-10-26 | Huynh Nhat Loong | 4h | 4h | 20 | 20 | 20 |
| 54 | 4.2.2 | Establish connection with databases (the newly created ones) | 0.5d | 2022-11-08 A | 2022-11-08 A | 52, 53 | 100% | 2022-11-08 | 2022-11-08 | 0.5d | start no earlier than 2022-11-01 | Nguyen Nhat Anh | 4h | 4h | 20 | 20 | 20 |
| 55 | 4.2.3 | Migrate the old data | 1d | 2022-11-09 A | 2022-11-09 A | 54 | 100% | 2022-11-08 | 2022-11-09 | 1d | start no earlier than 2022-10-30 | Huynh Nhat Loong | 8h | 8h | 40 | 40 | 40 |
| 56 | 4.2.4 | Update the databases’ schemas for new requirements | 1d | 2022-11-08 A | 2022-11-09 A |  | 100% | 2022-11-08 | 2022-11-08 | 1d | start no earlier than 2022-10-31 | Ta Gia Hung | 8h | 8h | 40 | 40 | 40 |
| 57 | 4.2.5 | Integrate old services | 1d | 2022-11-10 A | 2022-11-10 A | 55 | 100% | 2022-11-09 | 2022-11-10 | 1d |  | Nguyen Nhat Anh | 8h | 8h | 40 | 40 | 40 |
| 58 | 4.2.6 | **Create services/endpoint for front-end:** | 6d | 2022-11-07 A | 2022-11-14 A | 56, 57 | 100% | 2022-11-07 | 2022-11-14 | 5.5d |  |  | 64h | 64h | 320 | 320 | 320 |
| 59 | 4.2.6.1 | **E-book:** | 2d | 2022-11-11 A | 2022-11-14 A |  | 100% | 2022-11-10 | 2022-11-11 | 1d |  |  | 32h | 32h | 160 | 160 | 160 |
| 60 | 4.2.6.1.1 | List ebooks | 0.5d | 2022-11-11 A | 2022-11-11 A |  | 100% | 2022-11-10 | 2022-11-10 | 0.5d | start no earlier than 2022-11-04 | Huynh Nhat Loong | 4h | 4h | 20 | 20 | 20 |
| 61 | 4.2.6.1.2 | View ebook detail | 1d | 2022-11-14 A | 2022-11-14 A |  | 100% | 2022-11-10 | 2022-11-11 | 1d |  | Ta Gia Hung | 8h | 8h | 40 | 40 | 40 |
| 62 | 4.2.6.1.3 | Read ebook in trial mode | 1d | 2022-11-11 A | 2022-11-11 A |  | 100% | 2022-11-10 | 2022-11-11 | 1d |  | Nguyen Nhat Anh | 8h | 8h | 40 | 40 | 40 |
| 63 | 4.2.6.1.4 | Request ebook rental | 0.5d | 2022-11-11 A | 2022-11-11 A |  | 100% | 2022-11-11 | 2022-11-11 | 0.5d | start no earlier than 2022-11-11 | Huynh Nhat Loong | 4h | 4h | 20 | 20 | 20 |
| 64 | 4.2.6.1.5 | Approve ebook rental requests | 1d | 2022-11-11 A | 2022-11-11 A |  | 100% | 2022-11-10 | 2022-11-11 | 1d | start no earlier than 2022-11-03 | Ta Gia Hung | 8h | 8h | 40 | 40 | 40 |
| 65 | 4.2.6.2 | **Management system:** | 6d | 2022-11-07 A | 2022-11-14 A |  | 100% | 2022-11-07 | 2022-11-14 | 5.5d |  |  | 16h | 16h | 80 | 80 | 80 |
| 66 | 4.2.6.2.1 | List auto-generated reports | 1d | 2022-11-07 A | 2022-11-07 A |  | 100% | 2022-11-07 | 2022-11-07 | 1d | start no earlier than 2022-11-04 | Huynh Nhat Loong | 8h | 8h | 40 | 40 | 40 |
| 67 | 4.2.6.2.2 | View employees’ work progress | 1d | 2022-11-14 A | 2022-11-14 A |  | 100% | 2022-11-11 | 2022-11-14 | 1d | start no earlier than 2022-11-03 | Nguyen Nhat Anh | 8h | 8h | 40 | 40 | 40 |
| 68 | 4.2.6.3 | **Storage:** | 1d | 2022-11-07 A | 2022-11-07 A |  | 100% | 2022-11-07 | 2022-11-07 | 1d |  |  | 16h | 16h | 80 | 80 | 80 |
| 69 | 4.2.6.3.1 | Request stocking more books | 1d | 2022-11-07 A | 2022-11-07 A |  | 100% | 2022-11-07 | 2022-11-07 | 1d | start no earlier than 2022-11-04 | Nguyen Nhat Anh | 8h | 8h | 40 | 40 | 40 |
| 70 | 4.2.6.3.2 | Track book delivery progress | 1d | 2022-11-07 A | 2022-11-07 A |  | 100% | 2022-11-07 | 2022-11-07 | 1d | start no earlier than 2022-11-04 | Ta Gia Hung | 8h | 8h | 40 | 40 | 40 |
| 71 | 4.2.7 | **Test** | 3d | 2022-11-15 A | 2022-11-17 A |  | 100% | 2022-11-14 | 2022-11-16 | 2.5d |  |  | 32h | 32h | 160 | 160 | 160 |
| 72 | 4.2.7.1 | Unit test - Structural test | 1d | 2022-11-16 A | 2022-11-16 A | 58 | 100% | 2022-11-15 | 2022-11-15 | 1d |  | Luu Trinh Lam | 8h | 8h | 40 | 40 | 40 |
| 73 | 4.2.7.2 | End-point test - Functional test | 1d | 2022-11-15 A | 2022-11-15 A | 58 | 100% | 2022-11-14 | 2022-11-15 | 1d |  | Ta Gia Hung | 8h | 8h | 40 | 40 | 40 |
| 74 | 4.2.7.3 | Database Server validation | 1d | 2022-11-15 A | 2022-11-15 A | 56, 57 | 100% | 2022-11-14 | 2022-11-15 | 1d | start no earlier than 2022-11-07 | Nguyen Nhat Anh | 8h | 8h | 40 | 40 | 40 |
| 75 | 4.2.7.4 | Overall Coverage and test report: meeting with QA | 1d | 2022-11-17 A | 2022-11-17 A | 72, 73, 74 | 100% | 2022-11-16 | 2022-11-16 | 1d | start no earlier than 2022-11-08 | Luu Trinh Lam | 8h | 8h | 40 | 40 | 40 |

| ID | WBS | Task | Type | Duration | Start | Finish | Predecessors | Complete | Remaining | Baseline start | Baseline finish | Baseline duration | Total slack | Free slack | Constraint | Resources | Work | Actual work | Cost | Baseline cost | Actual cost |
| --- | --- | --- | --- | --- | --- | --- | --- | --- | --- | --- | --- | --- | --- | --- | --- | --- | --- | --- | --- | --- | --- |
| 76 | 5 | **Deployment:** |  | 3d | 2022-11-25 A | 2022-11-29 | 32 | 55% | 1.36d | 2022-11-21 | 2022-11-24 | 3d | -1d | 0d |  |  | 44h | 24h | 220 | 220 | 120 |
| 77 | 5.1 | Packaging all the code |  | 0.5d | 2022-11-25 A | 2022-11-25 A |  | 100% |  | 2022-11-21 | 2022-11-21 | 0.5d |  |  | start no earlier than 2022-11-21 | Luu Trinh Lam | 4h | 4h | 20 | 20 | 20 |
| 78 | 5.2 | Setting up hosting service |  | 2d | 2022-11-25 A | 2022-11-28 |  | 50% | 1d | 2022-11-21 | 2022-11-23 | 2d | -3d | 0d | start no earlier than 2022-11-21 | Ta Gia Hung | 16h | 8h | 80 | 80 | 40 |
| 79 | 5.3 | Test the connection to the web |  | 0.5d | 2022-11-25 A | 2022-11-25 A |  | 100% |  | 2022-11-21 | 2022-11-21 | 0.5d |  |  | start no earlier than 2022-11-14 | Nguyen Nhat Anh | 4h | 4h | 20 | 20 | 20 |
| 80 | 5.4 | Test stability and speed of the web |  | 1.5d | 2022-11-25 A | 2022-11-28 |  | 67% | 0.5d | 2022-11-21 | 2022-11-22 | 1.5d | -2.5d | 0d | start no earlier than 2022-11-13 | Huynh Nhat Loong | 12h | 8h | 60 | 60 | 40 |
| 81 | 5.5 | Meeting with Client to gain feedback for successful release |  | 1d | 2022-11-29 | 2022-11-29 | 77, 78, 79, 80 |  |  | 2022-11-23 | 2022-11-24 | 1d | -3d | 0d | start no earlier than 2022-11-15 | Luu Trinh Lam | 8h |  | 40 | 40 |  |
| 82 | 6 | **Hand over the system to Client (Head of Library)** |  | 7d | 2022-11-25 A | 2022-12-05 | 81 | 9% | 6.36d | 2022-11-23 | 2022-11-30 | 5.5d | 0d |  |  |  | 44h | 4h | 220 | 220 | 20 |
| 83 | 6.1 | **Prepare user manual docs** |  | 2d | 2022-11-30 | 2022-12-01 |  |  |  | 2022-11-24 | 2022-11-28 | 2d | 0d |  |  |  | 20h |  | 100 | 100 |  |
| 84 | 6.1.1 | IT department |  | 1.5d | 2022-11-30 | 2022-12-01 |  |  |  | 2022-11-24 | 2022-11-28 | 1.5d | 0d |  |  | Luu Trinh Lam | 12h |  | 60 | 60 |  |
| 85 | 6.1.2 | Librarian |  | 0.5d | 2022-11-30 | 2022-11-30 |  |  |  | 2022-11-24 | 2022-11-24 | 0.5d | 1.5d |  |  | Ta Gia Hung | 4h |  | 20 | 20 |  |
| 86 | 6.1.3 | Head of Library |  | 0.5d | 2022-11-30 | 2022-11-30 |  |  |  | 2022-11-24 | 2022-11-24 | 0.5d | 1.5d |  |  | Nguyen Nhat Anh | 4h |  | 20 | 20 |  |
| 87 | 6.2 | **Demo and showing reports of the system** |  | 2d | 2022-12-02 | 2022-12-05 | 84, 85, 86 |  |  | 2022-11-28 | 2022-11-30 | 2d | 0d |  |  |  | 16h |  | 80 | 80 |  |
| 88 | 6.2.1 | Organize knowledge sharing sessions for staffs (IT, Librarian, Head of Library, HR) |  | 0.5d | 2022-12-02 | 2022-12-02 |  |  |  | 2022-11-28 | 2022-11-28 | 0.5d | 0d |  | start no earlier than 2022-11-21 | Huynh Nhat Loong | 4h |  | 20 | 20 |  |
| 89 | 6.2.2 | Transfer codebase ownership |  | 1d | 2022-12-02 | 2022-12-05 | 88 |  |  | 2022-11-29 | 2022-11-29 | 1d | 0d |  | start no earlier than 2022-11-21 | Luu Trinh Lam | 8h |  | 40 | 40 |  |
| 90 | 6.2.3 | Meeting with Head of Library to announce the final system |  | 0.5d | 2022-12-05 | 2022-12-05 | 88, 89 |  |  | 2022-11-30 | 2022-11-30 | 0.5d | 0d |  | start no earlier than 2022-11-24 | Nguyen Nhat Anh | 4h |  | 20 | 20 |  |
| 91 | 6.3 | **Prepare maintenance plan** |  | 2d | 2022-11-25 A | 2022-11-28 |  | 50% | 1d | 2022-11-23 | 2022-11-25 | 2.5d | 0d |  |  |  | 8h | 4h | 40 | 40 | 20 |
| 92 | 6.3.1 | **System checkup every 3 months** |  | 0.5d | 2022-11-25 A | 2022-11-25 A |  | 100% |  | 2022-11-25 | 2022-11-25 | 0.5d |  |  |  |  | 4h | 4h | 20 | 20 | 20 |
| 93 | 6.3.1.1 | System checkup every 3 months 1 | manual | 0.5d | 2022-11-25 A | 2022-11-25 A | 90 | 100% |  | 2022-11-25 | 2022-11-25 | 0.5d |  |  | start no earlier than 2022-11-29 | Luu Trinh Lam | 4h | 4h | 20 | 20 | 20 |
| 94 | 6.3.2 | Planning for recurring training about security for the library system | manual | 0.5d | 2022-11-28 | 2022-11-28 |  |  |  | 2022-11-23 | 2022-11-23 | 0.5d |  |  |  | Huynh Nhat Loong | 4h |  | 20 | 20 |  |
